# Pepper

Schedule from MS Project, 2007-03-01 to 2007-05-01.

## Calendars

- Standard: Mon-Fri 09:00-13:00, 14:00-18:00; Sat-Sun off.

## Resources

| Resource |
| --- |
| Moshe |
| Andrey |
| Dmitriy |

## Schedule

| ID | WBS | Task | Duration | Start | Finish | Predecessors | Total slack | Free slack | Resources | Work |
| --- | --- | --- | --- | --- | --- | --- | --- | --- | --- | --- |
| 1 | 1 | **Core** | 4d | 2007-03-01 | 2007-03-06 |  | 9d | 0d |  | 32h |
| 2 | 1.1 | Blocks CMS | 4d | 2007-03-01 | 2007-03-06 |  | 9d | 10d | Moshe | 32h |
| 3 | 2 | **Catalog** | 21.5d | 2007-03-07 | 2007-04-05 | 1 | 8.5d | 4d |  | 248h |
| 4 | 2.1 | Admin | 10d | 2007-03-07 | 2007-03-20 |  | 9d | 0d | Andrey; Dmitriy | 160h |
| 5 | 2.2 | PriceRules | 5d | 2007-03-07 | 2007-03-13 |  | 14d | 5d | Moshe | 40h |
| 6 | 2.3 | Frontend | 2d | 2007-04-03 | 2007-04-05 | 4, 2, 5 | 8.5d |  | Dmitriy | 16h |
| 7 | 2.4 | DataFeeds | 2d | 2007-03-14 | 2007-03-15 |  | 23d |  | Moshe | 16h |
| 8 | 2.5 | Bulk updates | 2d | 2007-03-16 | 2007-03-19 |  | 21d |  | Moshe | 16h |
| 9 | 3 | **Customer** | 15.5d | 2007-03-21 | 2007-04-11 | 1 | 4.5d | 0d |  | 64h |
| 10 | 3.1 | **Frontend** | 4d | 2007-04-05 | 2007-04-11 |  | 4.5d |  |  | 32h |
| 11 | 3.1.1 | Login & Create account | 1d | 2007-04-05 | 2007-04-06 |  | 7.5d |  | Dmitriy | 8h |
| 12 | 3.1.2 | Edit Account | 1d | 2007-04-06 | 2007-04-09 |  | 6.5d |  | Dmitriy | 8h |
| 13 | 3.1.3 | Address book | 1d | 2007-04-09 | 2007-04-10 |  | 5.5d |  | Dmitriy | 8h |
| 14 | 3.1.4 | Balance page & Order history | 1d | 2007-04-10 | 2007-04-11 |  | 4.5d |  | Dmitriy | 8h |
| 15 | 3.2 | Admin | 4d | 2007-03-21 | 2007-03-26 |  | 16d |  | Andrey | 32h |
| 16 | 4 | Shopping Cart | 4d | 2007-04-11 | 2007-04-17 | 3, 9 | 4.5d | 0d | Dmitriy | 32h |
| 17 | 5 | **Sales** | 28d | 2007-03-01 | 2007-04-09 |  | 15d |  |  | 248h |
| 18 | 5.1 | Concept & Db | 4d | 2007-03-01 | 2007-03-06 |  | 28.5d | 9d | Moshe; Andrey; Dmitriy | 64h |
| 19 | 5.2 | **Admin** | 15d | 2007-03-20 | 2007-04-09 | 18 | 15d |  |  | 184h |
| 20 | 5.2.1 | Quotes, Orders, Invoices | 10.5d | 2007-03-20 | 2007-04-03 |  | 19.5d |  | Dmitriy; Moshe | 104h |
| 21 | 5.2.2 | Shipping, Payments | 10d | 2007-03-27 | 2007-04-09 |  | 15d |  | Andrey | 80h |
| 22 | 6 | **Checkout** | 7d | 2007-03-23 | 2007-04-03 | 18 | 19.5d |  |  | 56h |
| 23 | 6.1 | Single page | 7d | 2007-03-23 | 2007-04-03 |  | 19.5d |  | Moshe | 56h |
| 24 | 7 | Wishlist | 3d | 2007-04-11 | 2007-04-16 | 3, 9 | 10.5d |  | Moshe | 24h |

| ID | WBS | Task | Type | Duration | Start | Finish | Predecessors | Total slack | Free slack | Constraint | Resources | Work |
| --- | --- | --- | --- | --- | --- | --- | --- | --- | --- | --- | --- | --- |
| 25 | 8 | **Payments** |  | 5d | 2007-04-17 | 2007-04-24 | 18 | 4.5d |  |  |  | 40h |
| 26 | 8.1 | Generic CC |  | 2d | 2007-04-17 | 2007-04-19 |  | 5.5d | 0d |  | Dmitriy | 16h |
| 27 | 8.2 | Authorize.net |  | 2d | 2007-04-19 | 2007-04-23 | 26 | 5.5d |  |  | Dmitriy | 16h |
| 28 | 8.3 | Check/MO |  | 1d | 2007-04-23 | 2007-04-24 |  | 4.5d |  |  | Dmitriy | 8h |
| 29 | 9 | **Shipping** |  | 8d | 2007-04-17 | 2007-04-27 | 16 | 1.5d |  |  |  | 64h |
| 30 | 9.1 | UPS, USPS, DHL, FedEx |  | 5d | 2007-04-17 | 2007-04-24 |  | 4.5d |  |  | Andrey | 40h |
| 31 | 9.2 | Table rate |  | 3d | 2007-04-24 | 2007-04-27 |  | 1.5d |  |  | Andrey | 24h |
| 32 | 10 | Gift registry |  | 3d | 2007-04-16 | 2007-04-19 | 9 | 7.5d |  |  | Moshe | 24h |
| 33 | 11 | Alpha deadline | milestone | 0d | 2007-05-01 | 2007-05-01 |  | 0d |  | start no earlier than 2007-05-01 |  |  |
